# UJD_VN_Project_Schedule

Schedule from MS Project, 2014-05-12 to 2014-08-27.

## Calendars

- Standard: Mon-Fri 08:00-12:00, 13:00-17:00; Sat-Sun off.

## Resources

| Resource |
| --- |
| Project Team |
| NamLD |
| MinhPT |
| DatPT |
| TuanNN |

## Schedule

| ID | WBS | Task | Type | Duration | Start | Finish | Predecessors | Total slack | Resources | Work |
| --- | --- | --- | --- | --- | --- | --- | --- | --- | --- | --- |
| 1 | 1 | **UJD_VN** |  | 78d | 2014-05-12 | 2014-08-27 |  |  |  | 1976h |
| 2 | 1.1 | **Initiation** |  | 15d | 2014-05-12 | 2014-05-30 |  | 0d |  | 392h |
| 3 | 1.1.1 | Develop project Idea | manual | 1d | 2014-05-12 | 2014-05-12 |  |  | Project Team | 8h |
| 4 | 1.1.2 | Prepare project | manual | 0.5d | 2014-05-13 | 2014-05-13 | 3 |  | Project Team | 4h |
| 5 | 1.1.3 | Q & A Management | manual | 0.5d | 2014-05-13 | 2014-05-13 | 4 |  | TuanNN | 4h |
| 6 | 1.1.4 | **Develop report no.1: Introduction** |  | 6d | 2014-05-13 | 2014-05-20 |  |  |  | 48h |
| 7 | 1.1.4.1 | System feasible study | manual | 1d | 2014-05-13 | 2014-05-13 | 3 |  | Project Team | 8h |
| 8 | 1.1.4.2 | Define business situation | manual | 1d | 2014-05-13 | 2014-05-13 | 3 |  | Project Team | 8h |
| 9 | 1.1.4.3 | Define project and system scope | manual | 1d | 2014-05-14 | 2014-05-14 | 7, 8 |  | Project Team | 8h |
| 10 | 1.1.4.4 | Review & update report no.1 : Draft vesion | manual | 0.5d | 2014-05-15 | 2014-05-15 | 9 |  | NamLD | 4h |
| 11 | 1.1.4.5 | Submit report no.1 first version | manual | 0.5d | 2014-05-15 | 2014-05-15 | 10 |  | NamLD | 4h |
| 12 | 1.1.4.6 | Revise after got comments for report no.1 | manual | 1d | 2014-05-16 | 2014-05-16 | 11 |  | NamLD | 8h |
| 13 | 1.1.4.7 | Kick-off meeting | milestone, manual | 0d | 2014-05-19 | 2014-05-19 | 12 |  | Project Team |  |
| 14 | 1.1.4.8 | Progress Report 1 | manual | 1d | 2014-05-19 | 2014-05-19 | 12 |  | TuanNN | 8h |
| 15 | 1.1.4.9 | Submit report no.1 final version | milestone, manual | 0d | 2014-05-20 | 2014-05-20 | 13 |  | NamLD |  |
| 16 | 1.1.5 | **Technologies** |  | 9d | 2014-05-15 | 2014-05-27 |  |  |  | 132h |
| 17 | 1.1.5.1 | Research development technology | manual | 2d | 2014-05-15 | 2014-05-16 | 9 |  | DatPT; NamLD | 32h |
| 18 | 1.1.5.2 | Install and configuration PHP with Xampp | manual | 0.5d | 2014-05-19 | 2014-05-19 | 17 |  | NamLD | 4h |
| 19 | 1.1.5.3 | Study Xampp and MYSQL | manual | 6d | 2014-05-19 | 2014-05-27 | 18 |  | DatPT; NamLD | 96h |
| 20 | 1.1.6 | **Requirements** |  | 9d | 2014-05-20 | 2014-05-30 |  |  |  | 128h |
| 21 | 1.1.6.1 | Collect business requirements and processes | manual | 1d | 2014-05-20 | 2014-05-20 | 15 |  | MinhPT; NamLD | 16h |
| 22 | 1.1.6.2 | Create draft screen prototypes | manual | 6d | 2014-05-21 | 2014-05-28 | 21 |  | DatPT; TuanNN | 96h |
| 23 | 1.1.6.3 | Review and edit screen prototypes | manual | 1d | 2014-05-29 | 2014-05-29 | 22 |  | DatPT; TuanNN | 16h |
| 24 | 1.1.6.4 | Complete screen prototype | milestone, manual | 0d | 2014-05-30 | 2014-05-30 | 23 |  |  |  |

| ID | WBS | Task | Type | Duration | Start | Finish | Predecessors | Resources | Work |
| --- | --- | --- | --- | --- | --- | --- | --- | --- | --- |
| 25 | 1.1.7 | **Develop Project Plan** |  | 9d | 2014-05-20 | 2014-05-30 |  |  | 68h |
| 26 | 1.1.7.1 | Develop project definition | manual | 1d | 2014-05-20 | 2014-05-21 | 13 | NamLD | 8h |
| 27 | 1.1.7.2 | Work BreakDown Structure | manual | 0.5d | 2014-05-22 | 2014-05-22 | 26 | NamLD | 4h |
| 28 | 1.1.7.3 | Create project schedule | manual | 1d | 2014-05-23 | 2014-05-23 | 27 | NamLD | 8h |
| 29 | 1.1.7.4 | **Develop report no.2: Project management Plan** |  | 6d | 2014-05-24 | 2014-05-30 |  |  | 48h |
| 30 | 1.1.7.4.1 | Create Project plan first version | manual | 2d | 2014-05-24 | 2014-05-26 | 28 | NamLD | 16h |
| 31 | 1.1.7.4.2 | Submit report no.2 first version | milestone, manual | 0d | 2014-05-27 | 2014-05-27 | 30 | NamLD |  |
| 32 | 1.1.7.4.3 | Revise after got comments for report no.2 | manual | 2d | 2014-05-28 | 2014-05-29 | 31 | NamLD; MinhPT | 32h |
| 33 | 1.1.7.4.4 | Progress Report | manual | 1d? | 2014-05-24 | 2014-05-24 |  |  |  |
| 34 | 1.1.7.4.5 | Submit report no.2 final version | milestone, manual | 0d | 2014-05-30 | 2014-05-30 | 32 | NamLD |  |
| 35 | 1.2 | **Solution** |  | 22d | 2014-06-02 | 2014-07-01 |  |  | 624h |
| 36 | 1.2.1 | **Project Management** |  | 3d | 2014-06-02 | 2014-06-04 |  |  | 16h |
| 37 | 1.2.1.1 | Refine project plan | manual | 2d | 2014-06-02 | 2014-06-03 | 34 | NamLD | 16h |
| 38 | 1.2.2 | **Technologies** |  | 7d | 2014-06-02 | 2014-06-10 |  |  | 112h |
| 39 | 1.2.2.1 | Design database models | manual | 1d | 2014-06-02 | 2014-06-02 | 34 | DatPT; NamLD | 16h |
| 40 | 1.2.2.2 | Coding prototypes | manual | 6d | 2014-06-03 | 2014-06-10 | 39 | DatPT; NamLD | 96h |
| 41 | 1.2.3 | **User Requirements Specification** |  | 5d | 2014-06-02 | 2014-06-06 |  |  | 80h |
| 42 | 1.2.3.1 | Create draft requirements | manual | 2d | 2014-06-02 | 2014-06-03 | 34 | MinhPT; TuanNN | 32h |
| 43 | 1.2.3.2 | Complete draft requirements | milestone, manual | 0d | 2014-06-04 | 2014-06-04 | 42 | MinhPT; TuanNN |  |
| 44 | 1.2.3.3 | Develop Use-case model | manual | 1d | 2014-06-04 | 2014-06-04 | 43 | MinhPT; TuanNN | 16h |
| 45 | 1.2.3.4 | Develop main functions and processes | manual | 2d | 2014-06-05 | 2014-06-06 | 44 | DatPT; NamLD | 32h |
| 46 | 1.2.4 | **Software Requirements Specification** |  | 10d | 2014-06-09 | 2014-06-20 |  |  | 172h |
| 47 | 1.2.4.1 | **Functional Requirement Specification** |  | 9d | 2014-06-09 | 2014-06-19 |  |  | 136h |
| 48 | 1.2.4.1.1 | **Phase 1** |  | 6d | 2014-06-09 | 2014-06-16 |  |  | 92h |
| 49 | 1.2.4.1.1.1 | Homepage Module | manual | 1d | 2014-06-09 | 2014-06-09 | 41 | NamLD; DatPT | 16h |

| ID | WBS | Task | Type | Duration | Start | Finish | Predecessors | Resources | Work |
| --- | --- | --- | --- | --- | --- | --- | --- | --- | --- |
| 50 | 1.2.4.1.1.2 | **Admin Module** |  | 5d | 2014-06-10 | 2014-06-16 |  |  | 40h |
| 51 | 1.2.4.1.1.2.1 | Admin’s account management Module | manual | 0.5d | 2014-06-10 | 2014-06-10 | 49 | NamLD | 4h |
| 52 | 1.2.4.1.1.2.2 | Management Member’s account Module | manual | 0.5d | 2014-06-10 | 2014-06-10 | 51 | NamLD | 4h |
| 53 | 1.2.4.1.1.2.3 | Vocabulary Management Module | manual | 0.5d | 2014-06-11 | 2014-06-11 | 52 | NamLD | 4h |
| 54 | 1.2.4.1.1.2.4 | Grammar Management Module | manual | 0.5d | 2014-06-11 | 2014-06-11 | 53 | NamLD | 4h |
| 55 | 1.2.4.1.1.2.5 | Reading Document Management Module | manual | 0.5d | 2014-06-12 | 2014-06-12 | 54 | NamLD | 4h |
| 56 | 1.2.4.1.1.2.6 | Conversation management Module | manual | 0.5d | 2014-06-12 | 2014-06-12 | 55 | NamLD | 4h |
| 57 | 1.2.4.1.1.2.7 | Video Management Module | manual | 0.5d | 2014-06-13 | 2014-06-13 | 56 | NamLD | 4h |
| 58 | 1.2.4.1.1.2.8 | Listening Article Management Module | manual | 0.5d | 2014-06-13 | 2014-06-13 | 57 | NamLD | 4h |
| 59 | 1.2.4.1.1.2.9 | Doing test management Module | manual | 0.5d | 2014-06-16 | 2014-06-16 | 58 | NamLD | 4h |
| 60 | 1.2.4.1.1.2.10 | Contact's content management Module | manual | 0.5d | 2014-06-16 | 2014-06-16 | 59 | NamLD | 4h |
| 61 | 1.2.4.1.1.3 | **Search Module** |  | 3d | 2014-06-10 | 2014-06-12 |  |  | 20h |
| 62 | 1.2.4.1.1.3.1 | Search Sentences Module | manual | 0.5d | 2014-06-10 | 2014-06-10 | 49 | DatPT | 4h |
| 63 | 1.2.4.1.1.3.2 | Search Conversation Module | manual | 0.5d | 2014-06-10 | 2014-06-10 | 62 | DatPT | 4h |
| 64 | 1.2.4.1.1.3.3 | Search Video Module | manual | 0.5d | 2014-06-11 | 2014-06-11 | 63 | DatPT | 4h |
| 65 | 1.2.4.1.1.3.4 | Search Grammar Module | manual | 0.5d | 2014-06-11 | 2014-06-11 | 64 | DatPT | 4h |
| 66 | 1.2.4.1.1.3.5 | Search Specialized Japanese Module | manual | 0.5d | 2014-06-12 | 2014-06-12 | 65 | DatPT | 4h |
| 67 | 1.2.4.1.1.4 | Login/Logout Module | manual | 0.5d | 2014-06-12 | 2014-06-12 | 66 | DatPT | 4h |
| 68 | 1.2.4.1.1.5 | Register Account Module | manual | 0.5d | 2014-06-13 | 2014-06-13 | 67 | DatPT | 4h |
| 69 | 1.2.4.1.1.6 | Edit Profile Module | manual | 0.5d | 2014-06-13 | 2014-06-13 | 68 | DatPT | 4h |
| 70 | 1.2.4.1.1.7 | Forgot Password Module | manual | 0.5d | 2014-06-16 | 2014-06-16 | 69 | DatPT | 4h |
| 71 | 1.2.4.1.2 | **Phase 2** |  | 4d | 2014-06-16 | 2014-06-19 |  |  | 44h |
| 72 | 1.2.4.1.2.1 | Contact Admin Module | manual | 2.5d | 2014-06-16 | 2014-06-18 | 70 | NamLD | 20h |
| 73 | 1.2.4.1.2.2 | Doing Test Module | manual | 0.5d | 2014-06-19 | 2014-06-19 | 72 | NamLD | 4h |
| 74 | 1.2.4.1.2.3 | Reading Document Module | manual | 1d | 2014-06-16 | 2014-06-17 | 70 | DatPT | 8h |
| 75 | 1.2.4.1.2.4 | Training Listening Module | manual | 1d | 2014-06-18 | 2014-06-18 | 74 | DatPT | 8h |
| 76 | 1.2.4.1.2.5 | Listening Conversation Module | manual | 0.5d | 2014-06-19 | 2014-06-19 | 75 | DatPT | 4h |

| ID | WBS | Task | Type | Duration | Start | Finish | Predecessors | Resources | Work |
| --- | --- | --- | --- | --- | --- | --- | --- | --- | --- |
| 77 | 1.2.4.2 | **Non-functional Requirements Specification** |  | 2d | 2014-06-09 | 2014-06-10 |  |  | 24h |
| 78 | 1.2.4.2.1 | Develop User Interface requirements | manual | 2d | 2014-06-09 | 2014-06-10 | 41 | MinhPT | 16h |
| 79 | 1.2.4.2.2 | Develop Performance requirements | manual | 1d | 2014-06-09 | 2014-06-09 | 41 | TuanNN | 8h |
| 80 | 1.2.4.3 | Submit report no.3 First version | milestone, manual | 0d | 2014-06-20 | 2014-06-20 | 47 | MinhPT |  |
| 81 | 1.2.4.4 | Revise after got comments of Report no.3 | manual | 0.5d | 2014-06-20 | 2014-06-20 | 80 | MinhPT | 4h |
| 82 | 1.2.4.5 | Progress Report 3 | manual | 1d | 2014-06-20 | 2014-06-20 | 47 | TuanNN | 8h |
| 83 | 1.2.4.6 | Submit report no.3 final version | milestone, manual | 0d | 2014-06-20 | 2014-06-20 | 81 | MinhPT |  |
| 84 | 1.2.5 | **Design** |  | 17d | 2014-06-09 | 2014-07-01 |  |  | 244h |
| 85 | 1.2.5.1 | **System Architectural Design** |  | 4d | 2014-06-09 | 2014-06-12 | 41 |  | 44h |
| 86 | 1.2.5.1.1 | Define the system structure and collect system features | manual | 1d | 2014-06-09 | 2014-06-09 |  | DatPT; NamLD | 16h |
| 87 | 1.2.5.1.2 | Study the common System Architeture | manual | 1d | 2014-06-10 | 2014-06-10 | 86 | DatPT; NamLD | 16h |
| 88 | 1.2.5.1.3 | Choice of System Architeture | manual | 0.5d | 2014-06-11 | 2014-06-11 | 87 | NamLD | 4h |
| 89 | 1.2.5.1.4 | Discussion of Alternative Design | manual | 1d | 2014-06-11 | 2014-06-12 | 88 | DatPT | 8h |
| 90 | 1.2.5.2 | **Detailed Design** |  | 16d | 2014-06-09 | 2014-06-30 |  |  | 192h |
| 91 | 1.2.5.2.1 | **Component Diagram** |  | 3d | 2014-06-09 | 2014-06-11 |  |  | 40h |
| 92 | 1.2.5.2.1.1 | Define the component | manual | 1d | 2014-06-09 | 2014-06-09 | 41 | DatPT; NamLD | 16h |
| 93 | 1.2.5.2.1.2 | General component diagram | manual | 0.5d | 2014-06-10 | 2014-06-10 | 92 | NamLD | 4h |
| 94 | 1.2.5.2.1.3 | Detail component diagram | manual | 0.5d | 2014-06-10 | 2014-06-10 | 93 | NamLD | 4h |
| 95 | 1.2.5.2.1.4 | Detail Database Design | manual | 1d | 2014-06-11 | 2014-06-11 | 94 | DatPT; NamLD | 16h |
| 96 | 1.2.5.2.2 | **User Interface Design** |  | 14d | 2014-06-11 | 2014-06-30 |  |  | 152h |
| 97 | 1.2.5.2.2.1 | **Phase 1** |  | 8d | 2014-06-11 | 2014-06-20 |  |  | 104h |
| 98 | 1.2.5.2.2.1.1 | Homepage Module | manual | 1d | 2014-06-12 | 2014-06-12 | 95 | NamLD; DatPT | 16h |
| 99 | 1.2.5.2.2.1.2 | **Admin Module** |  | 4d | 2014-06-13 | 2014-06-18 |  |  | 32h |
| 100 | 1.2.5.2.2.1.2.1 | Admin Manage Account Module | manual | 1d | 2014-06-13 | 2014-06-13 | 98 | NamLD | 8h |
| 101 | 1.2.5.2.2.1.2.2 | Member's account management Module | manual | 1d | 2014-06-16 | 2014-06-16 | 100 | NamLD | 8h |
| 102 | 1.2.5.2.2.1.2.3 | Contribute Opinion, Database Management Module | manual | 1d | 2014-06-17 | 2014-06-17 | 101 | NamLD | 8h |
| 103 | 1.2.5.2.2.1.2.4 | Data Management Module | manual | 1d | 2014-06-18 | 2014-06-18 | 102 | NamLD | 8h |

| ID | WBS | Task | Type | Duration | Start | Finish | Predecessors | Total slack | Resources | Work |
| --- | --- | --- | --- | --- | --- | --- | --- | --- | --- | --- |
| 104 | 1.2.5.2.2.1.3 | **Search Module** |  | 6d | 2014-06-13 | 2014-06-20 |  |  |  | 40h |
| 105 | 1.2.5.2.2.1.3.1 | Search Sentences Module | manual | 1d | 2014-06-13 | 2014-06-13 | 98 |  | DatPT | 8h |
| 106 | 1.2.5.2.2.1.3.2 | Search Conversation Module | manual | 1d | 2014-06-16 | 2014-06-16 | 105 |  | DatPT | 8h |
| 107 | 1.2.5.2.2.1.3.3 | Search Video Module | manual | 1d | 2014-06-17 | 2014-06-17 | 106 |  | DatPT | 8h |
| 108 | 1.2.5.2.2.1.3.4 | Search Grammar Module | manual | 1d | 2014-06-18 | 2014-06-18 | 107 |  | DatPT | 8h |
| 109 | 1.2.5.2.2.1.3.5 | Search Specialized Japanese Module | manual | 1d | 2014-06-19 | 2014-06-19 | 108 |  | DatPT | 8h |
| 110 | 1.2.5.2.2.1.4 | Login/Logout Module | manual | 0.5d | 2014-06-20 | 2014-06-20 | 109 |  | DatPT | 4h |
| 111 | 1.2.5.2.2.1.5 | Register Account Module | manual | 0.5d | 2014-06-20 | 2014-06-20 | 110 |  | DatPT | 4h |
| 112 | 1.2.5.2.2.1.6 | Contribute Opinion, Database Module | manual | 1d | 2014-06-19 | 2014-06-19 | 103 |  | NamLD | 8h |
| 113 | 1.2.5.2.2.2 | **Phase 2** |  | 7d | 2014-06-21 | 2014-06-28 |  |  |  | 48h |
| 114 | 1.2.5.2.2.2.1 | Change Password Module | manual | 0.5d | 2014-06-21 | 2014-06-21 | 112 |  | NamLD | 4h |
| 115 | 1.2.5.2.2.2.2 | Forgot Password Module | manual | 0.5d | 2014-06-23 | 2014-06-23 | 114 |  | NamLD | 4h |
| 116 | 1.2.5.2.2.2.3 | Reading Document Module | manual | 1d | 2014-06-23 | 2014-06-23 | 111 |  | DatPT | 8h |
| 117 | 1.2.5.2.2.2.4 | Training Listening Module | manual | 1d | 2014-06-24 | 2014-06-24 | 116 |  | DatPT | 8h |
| 118 | 1.2.5.2.2.2.5 | Listening Conversation Module | manual | 1d | 2014-06-25 | 2014-06-25 | 117 |  | DatPT | 8h |
| 119 | 1.2.5.2.2.2.6 | Doing Test Module | manual | 2d | 2014-06-26 | 2014-06-27 | 118 |  | DatPT | 16h |
| 120 | 1.2.5.3 | Submit report no.4 First version | milestone, manual | 0d | 2014-06-28 | 2014-06-28 | 119 |  | NamLD |  |
| 121 | 1.2.5.4 | Review and update comments report #4 | manual | 1d | 2014-06-30 | 2014-06-30 | 120 |  | NamLD | 8h |
| 122 | 1.2.5.5 | Submit report no.4 final version | milestone, manual | 0d | 2014-07-01 | 2014-07-01 | 121 |  | NamLD |  |
| 123 | 1.3 | **Construction** |  | 35d | 2014-07-01 | 2014-08-18 |  |  |  | 880h |
| 124 | 1.3.1 | **Requirements & Design** |  | 2d | 2014-07-02 | 2014-07-03 |  |  |  | 24h |
| 125 | 1.3.1.1 | Refine requirement documents | manual | 1d | 2014-07-02 | 2014-07-02 | 35 |  | NamLD; MinhPT | 16h |
| 126 | 1.3.1.2 | Refine design documents | manual | 0.5d | 2014-07-03 | 2014-07-03 | 125 |  | DatPT; NamLD | 8h |
| 127 | 1.3.2 | **Coding & Unit Test** |  | 19d | 2014-07-03 | 2014-07-29 |  |  |  | 280h |
| 128 | 1.3.2.1 | **Phase 1** |  | 12.5d | 2014-07-03 | 2014-07-21 |  | 0d |  | 208h |
| 129 | 1.3.2.1.1 | Homepage Module | manual | 1.5d | 2014-07-03 | 2014-07-04 | 126 |  | DatPT; NamLD | 24h |

| ID | WBS | Task | Type | Duration | Start | Finish | Predecessors | Resources | Work |
| --- | --- | --- | --- | --- | --- | --- | --- | --- | --- |
| 130 | 1.3.2.1.2 | **Admin Module** |  | 10d | 2014-07-05 | 2014-07-17 |  |  | 80h |
| 131 | 1.3.2.1.2.1 | Admin Manage Account Module | manual | 2d | 2014-07-05 | 2014-07-07 | 129 | NamLD | 16h |
| 132 | 1.3.2.1.2.2 | Member's account management Module | manual | 2d | 2014-07-08 | 2014-07-09 | 131 | NamLD | 16h |
| 133 | 1.3.2.1.2.3 | Contribute Opinion, Database Management Module | manual | 1d | 2014-07-10 | 2014-07-10 | 132 | NamLD | 8h |
| 134 | 1.3.2.1.2.4 | Data Management Module | manual | 5d | 2014-07-11 | 2014-07-17 | 133 | NamLD | 40h |
| 135 | 1.3.2.1.3 | **Search Module** |  | 9d | 2014-07-05 | 2014-07-16 |  |  | 72h |
| 136 | 1.3.2.1.3.1 | Search Sentences Module | manual | 2d | 2014-07-05 | 2014-07-07 | 129 | DatPT | 16h |
| 137 | 1.3.2.1.3.2 | Search Conversation Module | manual | 2d | 2014-07-08 | 2014-07-09 | 136 | DatPT | 16h |
| 138 | 1.3.2.1.3.3 | Search Video Module | manual | 1d | 2014-07-10 | 2014-07-10 | 137 | DatPT | 8h |
| 139 | 1.3.2.1.3.4 | Search Grammar Module | manual | 2d | 2014-07-11 | 2014-07-14 | 138 | DatPT | 16h |
| 140 | 1.3.2.1.3.5 | Search Specialized Japanese Module | manual | 2d | 2014-07-15 | 2014-07-16 | 139 | DatPT | 16h |
| 141 | 1.3.2.1.4 | Login/Logout Module | manual | 1d | 2014-07-18 | 2014-07-18 | 134 | NamLD | 8h |
| 142 | 1.3.2.1.5 | Register Account Module | manual | 1d | 2014-07-21 | 2014-07-21 | 141 | NamLD | 8h |
| 143 | 1.3.2.1.6 | Contribute Opinion, Database Module | manual | 2d | 2014-07-17 | 2014-07-18 | 140 | DatPT | 16h |
| 144 | 1.3.2.2 | **Phase 2** |  | 7d | 2014-07-21 | 2014-07-29 |  |  | 72h |
| 145 | 1.3.2.2.1 | Change Password Module | manual | 1d | 2014-07-22 | 2014-07-22 | 142 | NamLD | 8h |
| 146 | 1.3.2.2.2 | Forgot Password Module | manual | 1d | 2014-07-23 | 2014-07-23 | 145 | NamLD | 8h |
| 147 | 1.3.2.2.3 | Reading Document Module | manual | 2d | 2014-07-21 | 2014-07-22 | 143 | DatPT | 16h |
| 148 | 1.3.2.2.4 | Training Listening Module | manual | 1d | 2014-07-23 | 2014-07-23 | 147 | DatPT | 8h |
| 149 | 1.3.2.2.5 | Listening Conversation Module | manual | 1d | 2014-07-24 | 2014-07-24 | 148 | DatPT | 8h |
| 150 | 1.3.2.2.6 | Doing Test Module | manual | 3d | 2014-07-25 | 2014-07-29 | 149 | DatPT | 24h |
| 151 | 1.3.3 | **Testing** |  | 45d | 2014-06-16 | 2014-08-15 |  |  | 544h |
| 152 | 1.3.3.1 | **Create test documents (Report 5)** |  | 26d | 2014-06-16 | 2014-07-19 |  |  | 312h |
| 153 | 1.3.3.1.1 | Create test plan | manual | 6d | 2014-06-16 | 2014-06-23 |  | MinhPT; TuanNN | 96h |
| 154 | 1.3.3.1.2 | Review and update Test Plan | manual | 1d | 2014-06-24 | 2014-06-24 | 153 | MinhPT; TuanNN | 16h |

| ID | WBS | Task | Type | Duration | Start | Finish | Predecessors | Resources | Work |
| --- | --- | --- | --- | --- | --- | --- | --- | --- | --- |
| 155 | 1.3.3.1.3 | **Create test cases** |  | 13d | 2014-06-25 | 2014-07-11 |  |  | 160h |
| 156 | 1.3.3.1.3.1 | Create Unit Test Case | manual | 7d | 2014-06-25 | 2014-07-03 | 154 | MinhPT; TuanNN | 112h |
| 157 | 1.3.3.1.3.2 | Create Integration Test Case | manual | 2d | 2014-07-04 | 2014-07-07 | 156 | MinhPT; TuanNN | 32h |
| 158 | 1.3.3.1.3.3 | Create System Test Case | manual | 1d | 2014-07-08 | 2014-07-08 | 157 | MinhPT; TuanNN | 16h |
| 159 | 1.3.3.1.4 | Create test checklist | manual | 2d | 2014-07-09 | 2014-07-10 | 158 | TuanNN | 16h |
| 160 | 1.3.3.1.5 | Review test documents | manual | 1d | 2014-07-11 | 2014-07-11 | 159 | MinhPT | 8h |
| 161 | 1.3.3.1.6 | Submit report no.5 First version | milestone, manual | 0d | 2014-07-14 | 2014-07-14 | 160 | NamLD |  |
| 162 | 1.3.3.1.7 | Review report no.5 | manual | 1d | 2014-07-15 | 2014-07-15 | 161 | MinhPT; NamLD | 16h |
| 163 | 1.3.3.1.8 | Submit report no.5 final version | milestone, manual | 0d | 2014-07-16 | 2014-07-16 | 162 | NamLD |  |
| 164 | 1.3.3.2 | **Execute test** |  | 15d | 2014-07-21 | 2014-08-08 |  |  | 232h |
| 165 | 1.3.3.2.1 | **Execute Test Phase 1** |  | 8d | 2014-07-21 | 2014-07-30 |  |  | 128h |
| 166 | 1.3.3.2.1.1 | Execute Unit Test | manual | 5d | 2014-07-21 | 2014-07-25 | 163 | MinhPT; TuanNN | 80h |
| 167 | 1.3.3.2.1.2 | Fix bug Unit Test | manual | 1d | 2014-07-28 | 2014-07-28 | 166 | DatPT; NamLD | 16h |
| 168 | 1.3.3.2.1.3 | Execute Integration Test | manual | 1d | 2014-07-29 | 2014-07-29 | 167 | MinhPT; TuanNN | 16h |
| 169 | 1.3.3.2.1.4 | Fix bug Integration Test | manual | 1d | 2014-07-30 | 2014-07-30 | 168 | DatPT; NamLD | 16h |
| 170 | 1.3.3.2.2 | **Execute Test Phase 2** |  | 8d | 2014-07-30 | 2014-08-08 |  |  | 104h |
| 171 | 1.3.3.2.2.1 | Execute Unit Test | manual | 4d | 2014-07-31 | 2014-08-05 | 169 | MinhPT; TuanNN | 64h |
| 172 | 1.3.3.2.2.2 | Fix bug Unit Test | manual | 1d | 2014-08-06 | 2014-08-06 | 171 | DatPT; NamLD | 16h |
| 173 | 1.3.3.2.2.3 | Execute Integration Test | manual | 1d | 2014-08-07 | 2014-08-07 | 172 | MinhPT; TuanNN | 16h |
| 174 | 1.3.3.2.2.4 | Fix bug Integration Test | manual | 0.5d | 2014-08-08 | 2014-08-08 | 173 |  |  |
| 175 | 1.3.3.2.2.5 | Execute System Test | manual | 0.5d | 2014-08-08 | 2014-08-08 | 174 | MinhPT; TuanNN | 8h |
| 176 | 1.3.4 | Create report no.6 -Software User's Manual | manual | 3d | 2014-08-11 | 2014-08-13 | 175 | NamLD | 24h |
| 177 | 1.3.5 | Submit report no.6 First version | milestone, manual | 0d | 2014-08-14 | 2014-08-14 | 176 | NamLD |  |
| 178 | 1.3.6 | Review & update report no.6 | manual | 1d | 2014-08-14 | 2014-08-14 | 177 | NamLD | 8h |
| 179 | 1.3.7 | Submit report no.6 final version | milestone, manual | 0d | 2014-08-15 | 2014-08-15 | 178 | NamLD |  |

| ID | WBS | Task | Type | Duration | Start | Finish | Predecessors | Resources | Work |
| --- | --- | --- | --- | --- | --- | --- | --- | --- | --- |
| 180 | 1.4 | **Transition** |  | 9d | 2014-08-15 | 2014-08-27 |  |  | 80h |
| 181 | 1.4.1 | **Preclosing** |  | 8d | 2014-08-15 | 2014-08-26 |  |  | 48h |
| 182 | 1.4.1.1 | Conduct project review-lessons learned | manual | 2d | 2014-08-15 | 2014-08-17 | 179 | Project Team | 16h |
| 183 | 1.4.1.2 | Complete program and documents | manual | 4d | 2014-08-18 | 2014-08-21 | 182 | Project Team | 32h |
| 184 | 1.4.1.3 | Submit the last document and CD source code | milestone, manual | 0d | 2014-08-22 | 2014-08-22 | 183 | Project Team |  |
| 185 | 1.4.2 | **Closing** |  | 4d | 2014-08-24 | 2014-08-27 |  |  | 32h |
| 186 | 1.4.2.1 | Prepare for presentation | manual | 2d | 2014-08-22 | 2014-08-24 | 184 | Project Team | 16h |
| 187 | 1.4.2.2 | Represent capstone project | manual | 2d | 2014-08-25 | 2014-08-26 | 186 | Project Team | 16h |
| 188 | 1.4.2.3 | Project completed | milestone, manual | 0d | 2014-08-27 | 2014-08-27 | 187 | Project Team |  |
