# UJD_VN_Project_Schedule

Schedule from MS Project, 2014-05-12 to 2014-08-29, A marks actual dates.

## Calendars

- Standard: Mon-Fri 08:00-12:00, 13:00-17:00; Sat-Sun off.

## Resources

| Resource |
| --- |
| Project Team |
| NamLD |
| MinhPT |
| DatPT |
| TuanNN |

## Schedule

| ID | WBS | Task | Type | Duration | Start | Finish | Predecessors | Complete | Remaining | Baseline start | Baseline finish | Baseline duration | Total slack | Resources | Work | Actual work |
| --- | --- | --- | --- | --- | --- | --- | --- | --- | --- | --- | --- | --- | --- | --- | --- | --- |
| 1 | 1 | **UJD_VN** |  | 80d | 2014-05-12 08:00 A | 2014-08-29 17:00 |  | 99% | 0.5d | 2014-05-12 08:00 | 2014-08-22 17:00 | 75d | 0d |  | 2448h | 2416h |
| 2 | 1.1 | **Initiation** |  | 14d | 2014-05-12 08:00 A | 2014-05-30 08:00 A |  | 100% |  | 2014-05-12 08:00 | 2014-05-30 17:00 | 15d |  |  | 576h | 576h |
| 3 | 1.1.1 | Develop project Idea |  | 1d | 2014-05-12 08:00 A | 2014-05-12 17:00 A |  | 100% |  | 2014-05-12 08:00 | 2014-05-12 17:00 | 1d |  | DatPT; MinhPT; NamLD; TuanNN | 32h | 32h |
| 4 | 1.1.2 | Prepare project |  | 0.5d | 2014-05-13 08:00 A | 2014-05-13 12:00 A | 3 | 100% |  | 2014-05-13 08:00 | 2014-05-13 12:00 | 0.5d |  | DatPT; MinhPT; NamLD; TuanNN | 16h | 16h |
| 5 | 1.1.3 | Q & A Management |  | 0.5d | 2014-05-13 13:00 A | 2014-05-13 17:00 A | 4 | 100% |  | 2014-05-13 13:00 | 2014-05-13 17:00 | 0.5d |  | TuanNN | 4h | 4h |
| 6 | 1.1.4 | **Develop report no.1: Introduction** |  | 5d | 2014-05-13 08:00 A | 2014-05-20 08:00 A |  | 100% |  | 2014-05-13 08:00 | 2014-05-20 17:00 | 6d |  |  | 144h | 144h |
| 7 | 1.1.4.1 | System feasible study |  | 1d | 2014-05-13 08:00 A | 2014-05-13 17:00 A | 3 | 100% |  | 2014-05-13 08:00 | 2014-05-13 17:00 | 1d |  | DatPT; MinhPT; NamLD; TuanNN | 32h | 32h |
| 8 | 1.1.4.2 | Define business situation |  | 1d | 2014-05-13 08:00 A | 2014-05-13 17:00 A | 3 | 100% |  | 2014-05-13 08:00 | 2014-05-13 17:00 | 1d |  | DatPT; MinhPT; NamLD; TuanNN | 32h | 32h |
| 9 | 1.1.4.3 | Define project and system scope |  | 1d | 2014-05-14 08:00 A | 2014-05-14 17:00 A | 7, 8 | 100% |  | 2014-05-14 08:00 | 2014-05-14 17:00 | 1d |  | DatPT; MinhPT; NamLD; TuanNN | 32h | 32h |
| 10 | 1.1.4.4 | Review & update report no.1 : Draft vesion |  | 0.5d | 2014-05-15 08:00 A | 2014-05-15 12:00 A | 9 | 100% |  | 2014-05-15 08:00 | 2014-05-15 12:00 | 0.5d |  | MinhPT; TuanNN | 8h | 8h |
| 11 | 1.1.4.5 | Submit report no.1 first version |  | 0.5d | 2014-05-15 13:00 A | 2014-05-15 17:00 A | 10 | 100% |  | 2014-05-15 13:00 | 2014-05-15 17:00 | 0.5d |  | MinhPT; TuanNN | 8h | 8h |
| 12 | 1.1.4.6 | Revise after got comments for report no.1 |  | 1d | 2014-05-16 08:00 A | 2014-05-16 17:00 A | 11 | 100% |  | 2014-05-16 08:00 | 2014-05-16 17:00 | 1d |  | MinhPT; TuanNN | 16h | 16h |
| 13 | 1.1.4.7 | Kick-off meeting | milestone | 0d | 2014-05-19 08:00 A | 2014-05-19 08:00 A | 12 | 100% |  | 2014-05-19 08:00 | 2014-05-19 08:00 |  |  | Project Team |  |  |
| 14 | 1.1.4.8 | Progress Report 1 |  | 1d | 2014-05-19 08:00 A | 2014-05-19 17:00 A | 12 | 100% |  | 2014-05-19 08:00 | 2014-05-19 17:00 | 1d |  | TuanNN; MinhPT | 16h | 16h |
| 15 | 1.1.4.9 | Submit report no.1 final version | milestone | 0d | 2014-05-20 08:00 A | 2014-05-20 08:00 A | 13 | 100% |  | 2014-05-20 08:00 | 2014-05-20 08:00 |  |  | MinhPT |  |  |
| 16 | 1.1.5 | **Technologies** |  | 8.5d | 2014-05-15 08:00 A | 2014-05-27 12:00 A |  | 100% |  | 2014-05-15 08:00 | 2014-05-27 17:00 | 9d |  |  | 136h | 136h |
| 17 | 1.1.5.1 | Research development technology |  | 2d | 2014-05-15 08:00 A | 2014-05-16 17:00 A | 9 | 100% |  | 2014-05-15 08:00 | 2014-05-16 17:00 | 2d |  | DatPT; NamLD | 32h | 32h |
| 18 | 1.1.5.2 | Install and configuration PHP with Xampp |  | 0.5d | 2014-05-19 08:00 A | 2014-05-19 12:00 A | 17 | 100% |  | 2014-05-19 08:00 | 2014-05-19 12:00 | 0.5d |  | NamLD; DatPT | 8h | 8h |
| 19 | 1.1.5.3 | Study Xampp and PHP, MYSQL |  | 6d | 2014-05-19 13:00 A | 2014-05-27 12:00 A | 18 | 100% |  | 2014-05-19 13:00 | 2014-05-27 12:00 | 6d |  | DatPT; NamLD | 96h | 96h |
| 20 | 1.1.6 | **Requirements** |  | 8d | 2014-05-20 08:00 A | 2014-05-30 08:00 A |  | 100% |  | 2014-05-20 08:00 | 2014-05-30 17:00 | 9d |  |  | 144h | 144h |
| 21 | 1.1.6.1 | Collect business requirements and processes |  | 1d | 2014-05-20 08:00 A | 2014-05-20 17:00 A | 15 | 100% |  | 2014-05-20 08:00 | 2014-05-20 17:00 | 1d |  | MinhPT; TuanNN | 16h | 16h |
| 22 | 1.1.6.2 | Create draft screen prototypes |  | 6d | 2014-05-21 08:00 A | 2014-05-28 17:00 A | 21 | 100% |  | 2014-05-21 08:00 | 2014-05-28 17:00 | 6d |  | DatPT; TuanNN | 96h | 96h |
| 23 | 1.1.6.3 | Review and edit screen prototypes |  | 1d | 2014-05-29 08:00 A | 2014-05-29 17:00 A | 22 | 100% |  | 2014-05-29 08:00 | 2014-05-29 17:00 | 1d |  | DatPT; TuanNN; MinhPT; NamLD | 32h | 32h |
| 24 | 1.1.6.4 | Complete screen prototype | milestone | 0d | 2014-05-30 08:00 A | 2014-05-30 08:00 A | 23 | 100% |  | 2014-05-30 08:00 | 2014-05-30 08:00 |  |  | DatPT; TuanNN |  |  |

| ID | WBS | Task | Type | Duration | Start | Finish | Predecessors | Complete | Baseline start | Baseline finish | Baseline duration | Resources | Work | Actual work |
| --- | --- | --- | --- | --- | --- | --- | --- | --- | --- | --- | --- | --- | --- | --- |
| 25 | 1.1.7 | **Develop Project Plan** |  | 7.75d | 2014-05-20 10:00 A | 2014-05-30 08:00 A |  | 100% | 2014-05-20 08:00 | 2014-05-30 17:00 | 9d |  | 100h | 100h |
| 26 | 1.1.7.1 | Develop project definition |  | 1d | 2014-05-20 10:00 A | 2014-05-21 10:00 A | 13 | 100% | 2014-05-20 10:00 | 2014-05-21 10:00 | 1d | NamLD; MinhPT | 16h | 16h |
| 27 | 1.1.7.2 | Work BreakDown Structure |  | 0.5d | 2014-05-22 08:00 A | 2014-05-22 12:00 A | 26 | 100% | 2014-05-22 08:00 | 2014-05-22 12:00 | 0.5d | NamLD; MinhPT | 8h | 8h |
| 28 | 1.1.7.3 | Create project schedule |  | 1d | 2014-05-23 08:00 A | 2014-05-23 17:00 A | 27 | 100% | 2014-05-23 08:00 | 2014-05-23 17:00 | 1d | NamLD; MinhPT | 16h | 16h |
| 29 | 1.1.7.4 | Q & A Management (Update) |  | 1d | 2014-05-22 13:00 A | 2014-05-23 12:00 A | 27 | 100% |  |  |  | TuanNN | 8h | 8h |
| 30 | 1.1.7.5 | **Develop report no.2: Project management Plan** |  | 4d | 2014-05-26 08:00 A | 2014-05-30 08:00 A |  | 100% | 2014-05-24 08:00 | 2014-05-30 17:00 | 6d |  | 52h | 52h |
| 31 | 1.1.7.5.1 | Create Project plan first version |  | 2d | 2014-05-26 08:00 A | 2014-05-27 17:00 A | 28 | 100% | 2014-05-24 08:00 | 2014-05-26 17:00 | 2d | NamLD; MinhPT | 32h | 32h |
| 32 | 1.1.7.5.2 | Submit Report no.2 first version | milestone | 0d | 2014-05-28 08:00 A | 2014-05-28 08:00 A | 31 | 100% | 2014-05-27 08:00 | 2014-05-27 08:00 |  | NamLD |  |  |
| 33 | 1.1.7.5.3 | Revise after got comments for report no.2 |  | 0.5d | 2014-05-28 08:00 A | 2014-05-28 12:00 A | 32 | 100% | 2014-05-27 08:00 | 2014-05-27 17:00 | 1d | NamLD; MinhPT | 8h | 8h |
| 34 | 1.1.7.5.4 | Complete Project Plan Final Version |  | 0.5d | 2014-05-29 08:00 A | 2014-05-29 12:00 A | 33 | 100% | 2014-05-28 08:00 | 2014-05-28 08:00 |  | NamLD | 4h | 4h |
| 35 | 1.1.7.5.5 | Progress Report 2 |  | 0.5d | 2014-05-29 08:00 A | 2014-05-29 12:00 A | 33 | 100% | 2014-05-29 08:00 | 2014-05-29 17:00 | 1d | TuanNN; MinhPT | 8h | 8h |
| 36 | 1.1.7.5.6 | Submit report no.2 final version | milestone | 0d | 2014-05-30 08:00 A | 2014-05-30 08:00 A | 33 | 100% | 2014-05-30 08:00 | 2014-05-30 08:00 |  | NamLD |  |  |
| 37 | 1.2 | **Solution** |  | 23.5d | 2014-06-02 08:00 A | 2014-07-03 12:00 A |  | 100% | 2014-06-02 08:00 | 2014-07-01 17:00 | 22d |  | 838h | 838h |
| 38 | 1.2.1 | **Project Management** |  | 2d | 2014-06-02 08:00 A | 2014-06-03 17:00 A |  | 100% | 2014-06-02 08:00 | 2014-06-04 17:00 | 3d |  | 32h | 32h |
| 39 | 1.2.1.1 | Refine project plan |  | 2d | 2014-06-02 08:00 A | 2014-06-03 17:00 A | 36 | 100% | 2014-06-02 08:00 | 2014-06-03 17:00 | 2d | NamLD; MinhPT | 32h | 32h |
| 40 | 1.2.2 | **Technologies** |  | 7d | 2014-06-02 08:00 A | 2014-06-10 17:00 A |  | 100% | 2014-06-02 08:00 | 2014-06-10 17:00 | 7d |  | 160h | 160h |
| 41 | 1.2.2.1 | Design database models |  | 1d | 2014-06-02 08:00 A | 2014-06-02 17:00 A | 36 | 100% | 2014-06-02 08:00 | 2014-06-02 17:00 | 1d | DatPT; NamLD | 16h | 16h |
| 42 | 1.2.2.2 | Coding prototypes |  | 6d | 2014-06-03 08:00 A | 2014-06-10 17:00 A | 41 | 100% | 2014-06-03 08:00 | 2014-06-10 17:00 | 6d | DatPT; NamLD; TuanNN | 144h | 144h |
| 43 | 1.2.3 | **User Requirements Specification** |  | 5d | 2014-06-02 08:00 A | 2014-06-06 17:00 A |  | 100% | 2014-06-02 08:00 | 2014-06-06 17:00 | 5d |  | 120h | 120h |
| 44 | 1.2.3.1 | Create draft requirements |  | 2d | 2014-06-02 08:00 A | 2014-06-03 17:00 A | 36 | 100% | 2014-06-02 08:00 | 2014-06-03 17:00 | 2d | MinhPT; TuanNN | 32h | 32h |
| 45 | 1.2.3.2 | Complete draft requirements | milestone | 0d | 2014-06-04 08:00 A | 2014-06-04 08:00 A | 44 | 100% | 2014-06-04 08:00 | 2014-06-04 08:00 |  | MinhPT; TuanNN |  |  |
| 46 | 1.2.3.3 | Completed User Requirement Document |  | 1d | 2014-06-04 08:00 A | 2014-06-04 17:00 A | 45 | 100% | 2014-06-04 08:00 | 2014-06-04 17:00 | 1d | MinhPT; TuanNN | 16h | 16h |
| 47 | 1.2.3.4 | Develop main functions and processes |  | 2d | 2014-06-05 08:00 A | 2014-06-06 17:00 A | 46 | 100% | 2014-06-05 08:00 | 2014-06-06 17:00 | 2d | DatPT; NamLD; MinhPT; TuanNN | 64h | 64h |
| 48 | 1.2.3.5 | Create Configuration Plan version 1.0 |  | 1d | 2014-06-06 08:00 A | 2014-06-06 17:00 A | 46 | 100% |  |  |  | TuanNN | 8h | 8h |

| ID | WBS | Task | Duration | Start | Finish | Predecessors | Complete | Baseline start | Baseline finish | Baseline duration | Resources | Work | Actual work |
| --- | --- | --- | --- | --- | --- | --- | --- | --- | --- | --- | --- | --- | --- |
| 49 | 1.2.4 | **Software Requirements Specification (Report 3)** | 9.75d | 2014-06-09 08:00 A | 2014-06-20 15:00 A |  | 100% | 2014-06-09 08:00 | 2014-06-20 17:00 | 10d |  | 140h | 140h |
| 50 | 1.2.4.1 | **Functional Requirement Specification** | 9.25d | 2014-06-09 08:00 A | 2014-06-20 10:00 A |  | 100% | 2014-06-09 08:00 | 2014-06-20 17:00 | 10d |  | 118h | 118h |
| 51 | 1.2.4.1.1 | **Part 1** | 7d | 2014-06-09 08:00 A | 2014-06-17 17:00 A |  | 100% | 2014-06-09 08:00 | 2014-06-16 17:00 | 6d |  | 92h | 92h |
| 52 | 1.2.4.1.1.1 | Homepage Module | 1d | 2014-06-09 08:00 A | 2014-06-09 17:00 A | 43 | 100% | 2014-06-09 08:00 | 2014-06-09 17:00 | 1d | TuanNN | 8h | 8h |
| 53 | 1.2.4.1.1.2 | **Admin Module** | 6d | 2014-06-10 08:00 A | 2014-06-17 17:00 A |  | 100% | 2014-06-10 08:00 | 2014-06-16 17:00 | 5d |  | 48h | 48h |
| 54 | 1.2.4.1.1.2.1 | Admin’s account management Module | 0.5d | 2014-06-10 08:00 A | 2014-06-10 12:00 A | 52 | 100% | 2014-06-10 08:00 | 2014-06-10 12:00 | 0.5d | TuanNN | 4h | 4h |
| 55 | 1.2.4.1.1.2.2 | Management Member’s account Module | 0.5d | 2014-06-10 13:00 A | 2014-06-10 17:00 A | 54 | 100% | 2014-06-10 13:00 | 2014-06-10 17:00 | 0.5d | TuanNN | 4h | 4h |
| 56 | 1.2.4.1.1.2.3 | Vocabulary Management Module | 0.5d | 2014-06-11 08:00 A | 2014-06-11 12:00 A | 55 | 100% | 2014-06-11 08:00 | 2014-06-11 12:00 | 0.5d | TuanNN | 4h | 4h |
| 57 | 1.2.4.1.1.2.4 | Grammar Management Module | 0.5d | 2014-06-11 13:00 A | 2014-06-11 17:00 A | 56 | 100% | 2014-06-11 13:00 | 2014-06-11 17:00 | 0.5d | TuanNN | 4h | 4h |
| 58 | 1.2.4.1.1.2.5 | Reading Document Management Module | 0.5d | 2014-06-12 08:00 A | 2014-06-12 12:00 A | 57 | 100% | 2014-06-12 08:00 | 2014-06-12 12:00 | 0.5d | TuanNN | 4h | 4h |
| 59 | 1.2.4.1.1.2.6 | Conversation management Module | 0.5d | 2014-06-12 13:00 A | 2014-06-12 17:00 A | 58 | 100% | 2014-06-12 13:00 | 2014-06-12 17:00 | 0.5d | TuanNN | 4h | 4h |
| 60 | 1.2.4.1.1.2.7 | Video Management Module | 0.5d | 2014-06-13 08:00 A | 2014-06-13 12:00 A | 59 | 100% | 2014-06-13 08:00 | 2014-06-13 12:00 | 0.5d | TuanNN | 4h | 4h |
| 61 | 1.2.4.1.1.2.8 | Training Listening Management Module | 0.5d | 2014-06-13 13:00 A | 2014-06-13 17:00 A | 60 | 100% | 2014-06-13 13:00 | 2014-06-13 17:00 | 0.5d | TuanNN | 4h | 4h |
| 62 | 1.2.4.1.1.2.9 | Test management Module | 0.5d | 2014-06-16 08:00 A | 2014-06-16 12:00 A | 61 | 100% | 2014-06-16 08:00 | 2014-06-16 12:00 | 0.5d | TuanNN | 4h | 4h |
| 63 | 1.2.4.1.1.2.10 | Contact's content management Module | 0.5d | 2014-06-16 13:00 A | 2014-06-16 17:00 A | 62 | 100% | 2014-06-16 13:00 | 2014-06-16 17:00 | 0.5d | TuanNN | 4h | 4h |
| 64 | 1.2.4.1.1.2.11 | Kanji Management Module | 0.5d | 2014-06-17 08:00 A | 2014-06-17 12:00 A | 63 | 100% |  |  |  | TuanNN | 4h | 4h |
| 65 | 1.2.4.1.1.2.12 | Sentence Management Module | 0.5d | 2014-06-17 13:00 A | 2014-06-17 17:00 A | 64 | 100% |  |  |  | TuanNN | 4h | 4h |
| 66 | 1.2.4.1.1.3 | **Search Module** | 2.5d | 2014-06-10 08:00 A | 2014-06-12 12:00 A |  | 100% | 2014-06-10 08:00 | 2014-06-12 17:00 | 3d |  | 20h | 20h |
| 67 | 1.2.4.1.1.3.1 | Search Sentences Module | 0.5d | 2014-06-10 08:00 A | 2014-06-10 12:00 A | 52 | 100% | 2014-06-10 08:00 | 2014-06-10 12:00 | 0.5d | MinhPT | 4h | 4h |
| 68 | 1.2.4.1.1.3.2 | Search Conversation Module | 0.5d | 2014-06-10 13:00 A | 2014-06-10 17:00 A | 67 | 100% | 2014-06-10 13:00 | 2014-06-10 17:00 | 0.5d | MinhPT | 4h | 4h |
| 69 | 1.2.4.1.1.3.3 | Search Video Module | 0.5d | 2014-06-11 08:00 A | 2014-06-11 12:00 A | 68 | 100% | 2014-06-11 08:00 | 2014-06-11 12:00 | 0.5d | MinhPT | 4h | 4h |
| 70 | 1.2.4.1.1.3.4 | Search Grammar Module | 0.5d | 2014-06-11 13:00 A | 2014-06-11 17:00 A | 69 | 100% | 2014-06-11 13:00 | 2014-06-11 17:00 | 0.5d | MinhPT | 4h | 4h |
| 71 | 1.2.4.1.1.3.5 | Search Specialized Japanese Module | 0.5d | 2014-06-12 08:00 A | 2014-06-12 12:00 A | 70 | 100% | 2014-06-12 08:00 | 2014-06-12 12:00 | 0.5d | MinhPT | 4h | 4h |
| 72 | 1.2.4.1.1.4 | Login/Logout Module | 0.5d | 2014-06-12 13:00 A | 2014-06-12 17:00 A | 71 | 100% | 2014-06-12 13:00 | 2014-06-12 17:00 | 0.5d | MinhPT | 4h | 4h |
| 73 | 1.2.4.1.1.5 | Register Account Module | 0.5d | 2014-06-13 08:00 A | 2014-06-13 12:00 A | 72 | 100% | 2014-06-13 08:00 | 2014-06-13 12:00 | 0.5d | MinhPT | 4h | 4h |
| 74 | 1.2.4.1.1.6 | Edit Profile Module | 0.5d | 2014-06-13 13:00 A | 2014-06-13 17:00 A | 73 | 100% | 2014-06-13 13:00 | 2014-06-13 17:00 | 0.5d | MinhPT | 4h | 4h |
| 75 | 1.2.4.1.1.7 | Forgot Password Module | 0.5d | 2014-06-16 08:00 A | 2014-06-16 12:00 A | 74 | 100% | 2014-06-16 08:00 | 2014-06-16 12:00 | 0.5d | MinhPT | 4h | 4h |

| ID | WBS | Task | Type | Duration | Start | Finish | Predecessors | Complete | Baseline start | Baseline finish | Baseline duration | Resources | Work | Actual work |
| --- | --- | --- | --- | --- | --- | --- | --- | --- | --- | --- | --- | --- | --- | --- |
| 76 | 1.2.4.1.2 | **Part 2** |  | 3.25d | 2014-06-17 08:00 A | 2014-06-20 10:00 A |  | 100% | 2014-06-16 08:00 | 2014-06-20 17:00 | 5d |  | 26h | 26h |
| 77 | 1.2.4.1.2.1 | Contact Admin Module |  | 1.5d | 2014-06-17 08:00 A | 2014-06-18 12:00 A | 63 | 100% | 2014-06-17 08:00 | 2014-06-18 12:00 | 1.5d | TuanNN | 12h | 12h |
| 78 | 1.2.4.1.2.2 | Doing Test Module |  | 0.5d | 2014-06-18 13:00 A | 2014-06-18 17:00 A | 77 | 100% | 2014-06-18 13:00 | 2014-06-18 17:00 | 0.5d | TuanNN | 4h | 4h |
| 79 | 1.2.4.1.2.3 | Reading Document Module |  | 0.5d | 2014-06-19 08:00 A | 2014-06-19 12:00 A | 78 | 100% | 2014-06-19 08:00 | 2014-06-19 12:00 | 0.5d | TuanNN | 4h | 4h |
| 80 | 1.2.4.1.2.4 | Training Listening Module |  | 0.5d | 2014-06-19 13:00 A | 2014-06-19 17:00 A | 79 | 100% | 2014-06-19 13:00 | 2014-06-19 17:00 | 0.5d | TuanNN | 4h | 4h |
| 81 | 1.2.4.1.2.5 | Conversation Module |  | 0.25d | 2014-06-20 08:00 A | 2014-06-20 10:00 A | 80 | 100% | 2014-06-20 08:00 | 2014-06-20 10:00 | 0.25d | TuanNN | 2h | 2h |
| 82 | 1.2.4.2 | **Non-functional Requirements Specification** |  | 1d | 2014-06-09 08:00 A | 2014-06-09 17:00 A |  | 100% | 2014-06-09 08:00 | 2014-06-09 17:00 | 1d |  | 16h | 16h |
| 83 | 1.2.4.2.1 | Develop User Interface requirements |  | 1d | 2014-06-09 08:00 A | 2014-06-09 17:00 A | 47 | 100% | 2014-06-09 08:00 | 2014-06-09 17:00 | 1d | DatPT | 8h | 8h |
| 84 | 1.2.4.2.2 | Develop Performance requirements |  | 1d | 2014-06-09 08:00 A | 2014-06-09 17:00 A | 46 | 100% | 2014-06-09 08:00 | 2014-06-09 17:00 | 1d | MinhPT | 8h | 8h |
| 85 | 1.2.4.3 | Q & A Management (Update) |  | 0.25d | 2014-06-10 08:00 A | 2014-06-10 10:00 A | 84 | 100% |  |  |  | TuanNN | 2h | 2h |
| 86 | 1.2.4.4 | Submit report no.3 First version | milestone | 0d | 2014-06-20 10:00 A | 2014-06-20 10:00 A | 81 | 100% | 2014-06-20 10:00 | 2014-06-20 10:00 |  | TuanNN |  |  |
| 87 | 1.2.4.5 | Revise after got comments of Report no.3 |  | 0.25d | 2014-06-20 10:00 A | 2014-06-20 12:00 A | 86 | 100% | 2014-06-20 10:00 | 2014-06-20 12:00 | 0.25d | TuanNN | 2h | 2h |
| 88 | 1.2.4.6 | Complete SRS Version 1.0 | milestone | 0d | 2014-06-20 13:00 A | 2014-06-20 13:00 A | 87 | 100% | 2014-06-20 13:00 | 2014-06-20 13:00 |  | TuanNN |  |  |
| 89 | 1.2.4.7 | Progress Report 3 |  | 0.25d | 2014-06-20 13:00 A | 2014-06-20 15:00 A | 87 | 100% | 2014-06-20 13:00 | 2014-06-20 15:00 | 0.25d | TuanNN | 2h | 2h |
| 90 | 1.2.4.8 | Submit report no.3 final version | milestone | 0d | 2014-06-20 15:00 A | 2014-06-20 15:00 A | 89 | 100% | 2014-06-20 15:00 | 2014-06-20 15:00 |  | TuanNN |  |  |
| 91 | 1.2.5 | **Design** |  | 15.75d | 2014-06-09 08:00 A | 2014-06-30 15:00 A |  | 100% | 2014-06-09 08:00 | 2014-07-01 17:00 | 17d |  | 218h | 218h |
| 92 | 1.2.5.1 | **System Architectural Design** |  | 4d | 2014-06-09 08:00 A | 2014-06-12 17:00 A | 43 | 100% | 2014-06-09 08:00 | 2014-06-12 17:00 | 4d |  | 50h | 50h |
| 93 | 1.2.5.1.1 | Define the system structure and collect system features |  | 1d | 2014-06-09 08:00 A | 2014-06-09 17:00 A | 47 | 100% | 2014-06-09 08:00 | 2014-06-09 17:00 | 1d | NamLD | 8h | 8h |
| 94 | 1.2.5.1.2 | Study the common System Architeture |  | 1d | 2014-06-10 08:00 A | 2014-06-10 17:00 A | 93 | 100% | 2014-06-10 08:00 | 2014-06-10 17:00 | 1d | NamLD | 8h | 8h |
| 95 | 1.2.5.1.3 | Choice of System Architeture |  | 1d | 2014-06-11 08:00 A | 2014-06-11 17:00 A | 94 | 100% | 2014-06-11 08:00 | 2014-06-11 17:00 | 1d | NamLD; DatPT | 16h | 16h |
| 96 | 1.2.5.1.4 | Complete Architecture Design version 1.0 |  | 1d | 2014-06-12 08:00 A | 2014-06-12 17:00 A | 95 | 100% | 2014-06-12 08:00 | 2014-06-12 17:00 | 1d | NamLD; DatPT | 16h | 16h |
| 97 | 1.2.5.1.5 | Q & A Management (Update) |  | 0.25d | 2014-06-11 08:00 A | 2014-06-11 10:00 A | 94 | 100% |  |  |  | TuanNN | 2h | 2h |
| 98 | 1.2.5.2 | **Detailed Design** |  | 13d | 2014-06-10 08:00 A | 2014-06-26 17:00 A |  | 100% | 2014-06-10 08:00 | 2014-07-01 17:00 | 16d |  | 160h | 160h |
| 99 | 1.2.5.2.1 | **Component Diagram** |  | 2d | 2014-06-10 08:00 A | 2014-06-11 17:00 A |  | 100% | 2014-06-10 08:00 | 2014-06-11 17:00 | 2d |  | 24h | 24h |
| 100 | 1.2.5.2.1.1 | Define the component |  | 0.5d | 2014-06-10 08:00 A | 2014-06-10 12:00 A | 83 | 100% | 2014-06-10 08:00 | 2014-06-10 12:00 | 0.5d | DatPT | 4h | 4h |
| 101 | 1.2.5.2.1.2 | Completed Screen Design version 1.0 |  | 0.5d | 2014-06-10 13:00 A | 2014-06-10 17:00 A | 100 | 100% | 2014-06-10 13:00 | 2014-06-10 17:00 | 0.5d | DatPT | 4h | 4h |
| 102 | 1.2.5.2.1.3 | Completed Class Design version 1.0 |  | 0.5d | 2014-06-11 08:00 A | 2014-06-11 12:00 A | 101 | 100% | 2014-06-11 08:00 | 2014-06-11 12:00 | 0.5d | DatPT; NamLD | 8h | 8h |
| 103 | 1.2.5.2.1.4 | Detail Data Design |  | 0.5d | 2014-06-11 13:00 A | 2014-06-11 17:00 A | 102 | 100% | 2014-06-11 13:00 | 2014-06-11 17:00 | 0.5d | DatPT; NamLD | 8h | 8h |

| ID | WBS | Task | Duration | Start | Finish | Predecessors | Complete | Baseline start | Baseline finish | Baseline duration | Resources | Work | Actual work |
| --- | --- | --- | --- | --- | --- | --- | --- | --- | --- | --- | --- | --- | --- |
| 104 | 1.2.5.2.2 | **User Interface Design** | 11d | 2014-06-12 08:00 A | 2014-06-26 17:00 A |  | 100% | 2014-06-12 08:00 | 2014-06-26 17:00 | 11d |  | 136h | 136h |
| 105 | 1.2.5.2.2.1 | **Part 1** | 7d | 2014-06-12 08:00 A | 2014-06-20 17:00 A |  | 100% | 2014-06-12 08:00 | 2014-06-19 17:00 | 6d |  | 92h | 92h |
| 106 | 1.2.5.2.2.1.1 | Homepage Module | 1d | 2014-06-12 08:00 A | 2014-06-12 17:00 A | 103 | 100% | 2014-06-12 08:00 | 2014-06-12 17:00 | 1d | DatPT | 8h | 8h |
| 107 | 1.2.5.2.2.1.2 | **Admin Module** | 6d | 2014-06-13 08:00 A | 2014-06-20 17:00 A |  | 100% | 2014-06-13 08:00 | 2014-06-19 17:00 | 5d |  | 48h | 48h |
| 108 | 1.2.5.2.2.1.2.1 | Admin’s account management Module | 0.5d | 2014-06-13 08:00 A | 2014-06-13 12:00 A | 96 | 100% | 2014-06-13 08:00 | 2014-06-13 12:00 | 0.5d | NamLD | 4h | 4h |
| 109 | 1.2.5.2.2.1.2.2 | Management Member’s account Module | 0.5d | 2014-06-13 13:00 A | 2014-06-13 17:00 A | 108 | 100% | 2014-06-13 13:00 | 2014-06-13 17:00 | 0.5d | NamLD | 4h | 4h |
| 110 | 1.2.5.2.2.1.2.3 | Vocabulary Management Module | 0.5d | 2014-06-16 08:00 A | 2014-06-16 12:00 A | 109 | 100% | 2014-06-16 08:00 | 2014-06-16 12:00 | 0.5d | NamLD | 4h | 4h |
| 111 | 1.2.5.2.2.1.2.4 | Grammar Management Module | 0.5d | 2014-06-16 13:00 A | 2014-06-16 17:00 A | 110 | 100% | 2014-06-16 13:00 | 2014-06-16 17:00 | 0.5d | NamLD | 4h | 4h |
| 112 | 1.2.5.2.2.1.2.5 | Reading Document Management Module | 0.5d | 2014-06-17 08:00 A | 2014-06-17 12:00 A | 111 | 100% | 2014-06-17 08:00 | 2014-06-17 12:00 | 0.5d | NamLD | 4h | 4h |
| 113 | 1.2.5.2.2.1.2.6 | Conversation management Module | 0.5d | 2014-06-17 13:00 A | 2014-06-17 17:00 A | 112 | 100% | 2014-06-17 13:00 | 2014-06-17 17:00 | 0.5d | NamLD | 4h | 4h |
| 114 | 1.2.5.2.2.1.2.7 | Video Management Module | 0.5d | 2014-06-18 08:00 A | 2014-06-18 12:00 A | 113 | 100% | 2014-06-18 08:00 | 2014-06-18 12:00 | 0.5d | NamLD | 4h | 4h |
| 115 | 1.2.5.2.2.1.2.8 | Listening Article Management Module | 0.5d | 2014-06-18 13:00 A | 2014-06-18 17:00 A | 114 | 100% | 2014-06-18 13:00 | 2014-06-18 17:00 | 0.5d | NamLD | 4h | 4h |
| 116 | 1.2.5.2.2.1.2.9 | Doing test management Module | 0.5d | 2014-06-19 08:00 A | 2014-06-19 12:00 A | 115 | 100% | 2014-06-19 08:00 | 2014-06-19 12:00 | 0.5d | NamLD | 4h | 4h |
| 117 | 1.2.5.2.2.1.2.10 | Contact's content management Module | 0.5d | 2014-06-19 13:00 A | 2014-06-19 17:00 A | 116 | 100% | 2014-06-19 13:00 | 2014-06-19 17:00 | 0.5d | NamLD | 4h | 4h |
| 118 | 1.2.5.2.2.1.2.11 | Kanji Management Module | 0.5d | 2014-06-20 08:00 A | 2014-06-20 12:00 A | 117 | 100% |  |  |  | NamLD | 4h | 4h |
| 119 | 1.2.5.2.2.1.2.12 | Sentence Management Module | 0.5d | 2014-06-20 13:00 A | 2014-06-20 17:00 A | 118 | 100% |  |  |  | NamLD | 4h | 4h |
| 120 | 1.2.5.2.2.1.3 | **Search Module** | 2.5d | 2014-06-13 08:00 A | 2014-06-17 12:00 A |  | 100% | 2014-06-13 08:00 | 2014-06-19 17:00 | 5d |  | 20h | 20h |
| 121 | 1.2.5.2.2.1.3.1 | Search Sentences Module | 0.5d | 2014-06-13 08:00 A | 2014-06-13 12:00 A | 106 | 100% | 2014-06-13 08:00 | 2014-06-13 12:00 | 0.5d | DatPT | 4h | 4h |
| 122 | 1.2.5.2.2.1.3.2 | Search Conversation Module | 0.5d | 2014-06-13 13:00 A | 2014-06-13 17:00 A | 121 | 100% | 2014-06-13 13:00 | 2014-06-13 17:00 | 0.5d | DatPT | 4h | 4h |
| 123 | 1.2.5.2.2.1.3.3 | Search Video Module | 0.5d | 2014-06-16 08:00 A | 2014-06-16 12:00 A | 122 | 100% | 2014-06-16 08:00 | 2014-06-16 12:00 | 0.5d | DatPT | 4h | 4h |
| 124 | 1.2.5.2.2.1.3.4 | Search Grammar Module | 0.5d | 2014-06-16 13:00 A | 2014-06-16 17:00 A | 123 | 100% | 2014-06-16 13:00 | 2014-06-16 17:00 | 0.5d | DatPT | 4h | 4h |
| 125 | 1.2.5.2.2.1.3.5 | Search Specialized Japanese Module | 0.5d | 2014-06-17 08:00 A | 2014-06-17 12:00 A | 124 | 100% | 2014-06-17 08:00 | 2014-06-17 12:00 | 0.5d | DatPT | 4h | 4h |
| 126 | 1.2.5.2.2.1.4 | Login/Logout Module | 0.5d | 2014-06-17 13:00 A | 2014-06-17 17:00 A | 125 | 100% | 2014-06-17 13:00 | 2014-06-17 17:00 | 0.5d | DatPT | 4h | 4h |
| 127 | 1.2.5.2.2.1.5 | Register Account Module | 0.5d | 2014-06-18 08:00 A | 2014-06-18 12:00 A | 126 | 100% | 2014-06-18 08:00 | 2014-06-18 12:00 | 0.5d | DatPT | 4h | 4h |
| 128 | 1.2.5.2.2.1.6 | Edit Profile Module | 0.5d | 2014-06-18 13:00 A | 2014-06-18 17:00 A | 127 | 100% | 2014-06-18 13:00 | 2014-06-18 17:00 | 0.5d | DatPT | 4h | 4h |
| 129 | 1.2.5.2.2.1.7 | Forgot Password Module | 0.5d | 2014-06-19 08:00 A | 2014-06-19 12:00 A | 128 | 100% | 2014-06-19 08:00 | 2014-06-19 12:00 | 0.5d | DatPT | 4h | 4h |

| ID | WBS | Task | Type | Duration | Start | Finish | Predecessors | Complete | Baseline start | Baseline finish | Baseline duration | Resources | Work | Actual work |
| --- | --- | --- | --- | --- | --- | --- | --- | --- | --- | --- | --- | --- | --- | --- |
| 130 | 1.2.5.2.2.2 | **Part 2** |  | 5.5d | 2014-06-19 13:00 A | 2014-06-26 17:00 A |  | 100% | 2014-06-19 08:00 | 2014-06-26 17:00 | 6d |  | 44h | 44h |
| 131 | 1.2.5.2.2.2.1 | Change Password Module |  | 0.5d | 2014-06-19 13:00 A | 2014-06-19 17:00 A | 129 | 100% | 2014-06-19 13:00 | 2014-06-19 17:00 | 0.5d | DatPT | 4h | 4h |
| 132 | 1.2.5.2.2.2.2 | Forgot Password Module |  | 0.5d | 2014-06-20 08:00 A | 2014-06-20 12:00 A | 131 | 100% | 2014-06-20 08:00 | 2014-06-20 12:00 | 0.5d | DatPT | 4h | 4h |
| 133 | 1.2.5.2.2.2.3 | Reading Document Module |  | 1d | 2014-06-20 13:00 A | 2014-06-23 12:00 A | 132 | 100% | 2014-06-20 13:00 | 2014-06-23 12:00 | 1d | DatPT | 8h | 8h |
| 134 | 1.2.5.2.2.2.4 | Training Listening Module |  | 0.5d | 2014-06-23 13:00 A | 2014-06-23 17:00 A | 133 | 100% | 2014-06-23 13:00 | 2014-06-23 17:00 | 0.5d | DatPT | 4h | 4h |
| 135 | 1.2.5.2.2.2.5 | Listening Conversation Module |  | 1d | 2014-06-24 08:00 A | 2014-06-24 17:00 A | 134 | 100% | 2014-06-24 08:00 | 2014-06-24 17:00 | 1d | DatPT | 8h | 8h |
| 136 | 1.2.5.2.2.2.6 | Doing Test Module |  | 2d | 2014-06-25 08:00 A | 2014-06-26 17:00 A | 135 | 100% | 2014-06-25 08:00 | 2014-06-26 17:00 | 2d | DatPT | 16h | 16h |
| 137 | 1.2.5.3 | Q & A Management (Update) |  | 0.25d | 2014-06-27 08:00 A | 2014-06-27 10:00 A | 136 | 100% |  |  |  | TuanNN | 2h | 2h |
| 138 | 1.2.5.4 | Submit report no.4 First version | milestone | 0d | 2014-06-27 08:00 A | 2014-06-27 08:00 A | 136 | 100% | 2014-06-29 08:00 | 2014-06-29 08:00 |  | MinhPT |  |  |
| 139 | 1.2.5.5 | Review and update comments report #4 |  | 0.25d | 2014-06-30 08:00 A | 2014-06-30 10:00 A | 138 | 100% | 2014-06-30 08:00 | 2014-06-30 10:00 | 0.25d | MinhPT | 2h | 2h |
| 140 | 1.2.5.6 | Progress Report 4 |  | 0.5d | 2014-06-30 10:00 A | 2014-06-30 15:00 A | 139 | 100% | 2014-06-30 10:00 | 2014-06-30 15:00 | 0.5d | TuanNN | 4h | 4h |
| 141 | 1.2.5.7 | Submit report no.4 final version | milestone | 0d | 2014-06-30 13:00 A | 2014-06-30 13:00 A | 139 | 100% | 2014-06-30 13:00 | 2014-06-30 13:00 |  | MinhPT |  |  |
| 142 | 1.2.6 | **Coding and Unit Test** |  | 8.5d | 2014-06-23 08:00 A | 2014-07-03 12:00 A |  | 100% | 2014-06-20 08:00 | 2014-07-01 17:00 | 8d |  | 64h | 64h |
| 143 | 1.2.6.1 | **Part 1** |  | 8.5d | 2014-06-23 08:00 A | 2014-07-03 12:00 A |  | 100% | 2014-06-20 08:00 | 2014-07-01 17:00 | 8d |  | 64h | 64h |
| 144 | 1.2.6.1.1 | Admin’s account management Module |  | 1d | 2014-06-23 08:00 A | 2014-06-23 17:00 A | 107 | 100% | 2014-06-20 08:00 | 2014-06-20 17:00 | 1d | NamLD | 8h | 8h |
| 145 | 1.2.6.1.2 | Management Member’s account Module |  | 1d | 2014-06-24 08:00 A | 2014-06-24 17:00 A | 144 | 100% | 2014-06-23 08:00 | 2014-06-23 17:00 | 1d | NamLD | 8h | 8h |
| 146 | 1.2.6.1.3 | Vocabulary Management Module |  | 1.5d | 2014-06-25 08:00 A | 2014-06-26 12:00 A | 145 | 100% | 2014-06-24 08:00 | 2014-06-24 12:00 | 0.5d | NamLD | 12h | 12h |
| 147 | 1.2.6.1.4 | Grammar Management Module |  | 0.5d | 2014-06-26 08:00 A | 2014-06-26 12:00 A | 146 | 100% | 2014-06-24 13:00 | 2014-06-24 17:00 | 0.5d | NamLD | 4h | 4h |
| 148 | 1.2.6.1.5 | Reading Document Management Module |  | 1d | 2014-06-27 08:00 A | 2014-06-27 17:00 A | 147 | 100% | 2014-06-25 08:00 | 2014-06-25 17:00 | 1d | NamLD | 8h | 8h |
| 149 | 1.2.6.1.6 | Conversation management Module |  | 1d | 2014-06-30 08:00 A | 2014-06-30 17:00 A | 148 | 100% | 2014-06-26 08:00 | 2014-06-26 17:00 | 1d | NamLD | 8h | 8h |
| 150 | 1.2.6.1.7 | Video Management Module |  | 0.5d | 2014-07-01 08:00 A | 2014-07-01 12:00 A | 149 | 100% | 2014-06-27 08:00 | 2014-06-27 12:00 | 0.5d | NamLD | 4h | 4h |
| 151 | 1.2.6.1.8 | Listening Article Management Module |  | 0.5d | 2014-07-02 08:00 A | 2014-07-02 12:00 A | 150 | 100% | 2014-06-27 13:00 | 2014-06-27 17:00 | 0.5d | NamLD | 4h | 4h |
| 152 | 1.2.6.1.9 | Doing test management Module |  | 0.5d | 2014-07-03 08:00 A | 2014-07-03 12:00 A | 151 | 100% | 2014-06-30 08:00 | 2014-06-30 17:00 | 1d | NamLD | 4h | 4h |
| 153 | 1.2.6.1.10 | Contact's content management Module |  | 0.5d | 2014-07-03 08:00 A | 2014-07-03 12:00 A | 152 | 100% | 2014-07-01 08:00 | 2014-07-01 17:00 | 1d | NamLD | 4h | 4h |

| ID | WBS | Task | Type | Duration | Start | Finish | Predecessors | Complete | Baseline start | Baseline finish | Baseline duration | Resources | Work | Actual work |
| --- | --- | --- | --- | --- | --- | --- | --- | --- | --- | --- | --- | --- | --- | --- |
| 154 | 1.2.7 | **Testing** |  | 9d | 2014-06-16 13:00 A | 2014-06-27 12:00 A |  | 100% | 2014-06-16 08:00 | 2014-07-01 17:00 | 12d |  | 104h | 104h |
| 155 | 1.2.7.1 | **Create Test Document (Report 5)** |  | 5d | 2014-06-16 13:00 A | 2014-06-23 13:00 A |  | 100% | 2014-06-16 13:00 | 2014-06-23 13:00 | 5d |  | 40h | 40h |
| 156 | 1.2.7.1.1 | Create test plan |  | 4.5d | 2014-06-16 13:00 A | 2014-06-20 17:00 A | 75 | 100% | 2014-06-16 13:00 | 2014-06-20 17:00 | 4.5d | MinhPT | 36h | 36h |
| 157 | 1.2.7.1.2 | Review and update Test Plan |  | 0.5d | 2014-06-23 08:00 A | 2014-06-23 12:00 A | 156 | 100% | 2014-06-23 08:00 | 2014-06-23 12:00 | 0.5d | MinhPT | 4h | 4h |
| 158 | 1.2.7.1.3 | Submit Final Test Plan | milestone | 0d | 2014-06-23 13:00 A | 2014-06-23 13:00 A | 157 | 100% | 2014-06-23 13:00 | 2014-06-23 13:00 |  | MinhPT |  |  |
| 159 | 1.2.7.2 | **Create Test Case** |  | 4d | 2014-06-23 13:00 A | 2014-06-27 12:00 A |  | 100% | 2014-06-23 08:00 | 2014-06-28 17:00 | 6d |  | 64h | 64h |
| 160 | 1.2.7.2.1 | Create Component Test Case |  | 3d | 2014-06-23 13:00 A | 2014-06-26 12:00 A | 158 | 100% | 2014-06-23 13:00 | 2014-06-28 17:00 | 5.5d | MinhPT; TuanNN | 48h | 48h |
| 161 | 1.2.7.2.2 | Review and Update Component Test Case |  | 1d | 2014-06-26 13:00 A | 2014-06-27 12:00 A | 160 | 100% |  |  |  | MinhPT; TuanNN | 16h | 16h |
| 162 | 1.3 | **Construction** |  | 34.5d | 2014-07-04 08:00 A | 2014-08-21 12:00 A |  | 100% | 2014-07-02 08:00 | 2014-08-11 17:00 | 29d |  | 842h | 842h |
| 163 | 1.3.1 | **Requirements & Design** |  | 0.25d | 2014-07-04 08:00 A | 2014-07-04 10:00 A |  | 100% | 2014-07-02 08:00 | 2014-07-03 17:00 | 2d |  | 6h | 6h |
| 164 | 1.3.1.1 | Refine requirement & design documents |  | 0.25d | 2014-07-04 08:00 A | 2014-07-04 10:00 A | 37 | 100% | 2014-07-02 08:00 | 2014-07-02 17:00 | 1d | MinhPT; TuanNN; NamLD | 6h | 6h |
| 165 | 1.3.2 | **Coding & Unit Test** |  | 15d | 2014-07-04 08:00 A | 2014-07-24 17:00 A |  | 100% | 2014-07-03 08:00 | 2014-07-22 17:00 | 14d |  | 184h | 184h |
| 166 | 1.3.2.1 | **Part 1 (Continue)** |  | 8d | 2014-07-04 08:00 A | 2014-07-15 17:00 A |  | 100% | 2014-07-03 13:00 | 2014-07-14 17:00 | 7.5d |  | 120h | 120h |
| 167 | 1.3.2.1.1 | Homepage Module |  | 2d | 2014-07-04 08:00 A | 2014-07-07 17:00 A |  | 100% | 2014-07-03 13:00 | 2014-07-04 17:00 | 1.5d | NamLD; DatPT | 32h | 32h |
| 168 | 1.3.2.1.2 | **Search Module** |  | 6d | 2014-07-08 08:00 A | 2014-07-15 17:00 A |  | 100% | 2014-07-05 08:00 | 2014-07-14 17:00 | 7d |  | 56h | 56h |
| 169 | 1.3.2.1.2.1 | Search Sentences Module |  | 2d | 2014-07-08 08:00 A | 2014-07-09 17:00 A | 167 | 100% | 2014-07-05 08:00 | 2014-07-07 17:00 | 2d | DatPT | 16h | 16h |
| 170 | 1.3.2.1.2.2 | Search Conversation Module |  | 1d | 2014-07-10 08:00 A | 2014-07-10 17:00 A | 169 | 100% | 2014-07-08 08:00 | 2014-07-08 17:00 | 1d | DatPT | 8h | 8h |
| 171 | 1.3.2.1.2.3 | Search Video Module |  | 1d | 2014-07-11 08:00 A | 2014-07-11 17:00 A | 170 | 100% | 2014-07-10 08:00 | 2014-07-10 17:00 | 1d | DatPT | 8h | 8h |
| 172 | 1.3.2.1.2.4 | Search Grammar Module |  | 1d | 2014-07-14 08:00 A | 2014-07-14 17:00 A | 171 | 100% | 2014-07-11 08:00 | 2014-07-11 17:00 | 1d | DatPT | 8h | 8h |
| 173 | 1.3.2.1.2.5 | Search Specialized Japanese Module |  | 1d | 2014-07-15 08:00 A | 2014-07-15 17:00 A | 172 | 100% | 2014-07-14 08:00 | 2014-07-14 17:00 | 1d | DatPT; NamLD | 16h | 16h |
| 174 | 1.3.2.1.3 | Login/Logout Module |  | 1d | 2014-07-08 08:00 A | 2014-07-08 17:00 A | 167 | 100% | 2014-07-07 08:00 | 2014-07-07 17:00 | 1d | NamLD | 8h | 8h |
| 175 | 1.3.2.1.4 | Register Account Module |  | 1d | 2014-07-09 08:00 A | 2014-07-09 17:00 A | 174 | 100% | 2014-07-08 08:00 | 2014-07-08 17:00 | 1d | NamLD | 8h | 8h |
| 176 | 1.3.2.1.5 | Edit Profile Module |  | 1d | 2014-07-10 08:00 A | 2014-07-10 17:00 A | 175 | 100% | 2014-07-09 08:00 | 2014-07-09 17:00 | 1d | NamLD | 8h | 8h |
| 177 | 1.3.2.1.6 | Forgot Password Module |  | 1d | 2014-07-11 08:00 A | 2014-07-11 17:00 A | 176 | 100% | 2014-07-10 08:00 | 2014-07-10 17:00 | 1d | NamLD | 8h | 8h |

| ID | WBS | Task | Type | Duration | Start | Finish | Predecessors | Complete | Baseline start | Baseline finish | Baseline duration | Resources | Work | Actual work |
| --- | --- | --- | --- | --- | --- | --- | --- | --- | --- | --- | --- | --- | --- | --- |
| 178 | 1.3.2.2 | **Part 2** |  | 7d | 2014-07-16 08:00 A | 2014-07-24 17:00 A |  | 100% | 2014-07-15 08:00 | 2014-07-22 17:00 | 6d |  | 64h | 64h |
| 179 | 1.3.2.2.1 | Contact Admin Module |  | 1d | 2014-07-16 08:00 A | 2014-07-16 17:00 A | 173 | 100% | 2014-07-15 08:00 | 2014-07-15 17:00 | 1d | DatPT | 8h | 8h |
| 180 | 1.3.2.2.2 | Forgot Password Module |  | 1d | 2014-07-17 08:00 A | 2014-07-17 17:00 A | 179 | 100% | 2014-07-16 08:00 | 2014-07-16 17:00 | 1d | DatPT | 8h | 8h |
| 181 | 1.3.2.2.3 | Training Reading Document Module |  | 1.5d | 2014-07-18 08:00 A | 2014-07-21 12:00 A | 180 | 100% | 2014-07-17 08:00 | 2014-07-18 12:00 | 1.5d | DatPT | 12h | 12h |
| 182 | 1.3.2.2.4 | Training Listening Module |  | 0.5d | 2014-07-22 08:00 A | 2014-07-22 12:00 A | 181 | 100% | 2014-07-18 13:00 | 2014-07-18 17:00 | 0.5d | DatPT | 4h | 4h |
| 183 | 1.3.2.2.5 | Listening Conversation Module |  | 1d | 2014-07-22 08:00 A | 2014-07-22 17:00 A | 205 | 100% | 2014-07-18 08:00 | 2014-07-18 17:00 | 1d | NamLD; DatPT | 16h | 16h |
| 184 | 1.3.2.2.6 | Doing Test Module |  | 1d | 2014-07-24 08:00 A | 2014-07-24 17:00 A | 183 | 100% | 2014-07-21 08:00 | 2014-07-22 12:00 | 1.5d | NamLD; DatPT | 16h | 16h |
| 185 | 1.3.2.3 | Complete Coding | milestone | 0d | 2014-07-24 08:00 A | 2014-07-24 08:00 A | 184 | 100% | 2014-07-22 13:00 | 2014-07-22 13:00 |  | NamLD |  |  |
| 186 | 1.3.3 | **Testing** |  | 19d | 2014-07-07 08:00 A | 2014-07-31 17:00 A |  | 100% | 2014-07-02 08:00 | 2014-07-29 17:00 | 20d |  | 252h | 252h |
| 187 | 1.3.3.1 | **Create test documents (Continue)** |  | 7d | 2014-07-07 08:00 A | 2014-07-16 08:00 A |  | 100% | 2014-07-02 08:00 | 2014-07-10 17:00 | 7d |  | 88h | 88h |
| 188 | 1.3.3.1.1 | **Create test cases** |  | 4.5d | 2014-07-07 08:00 A | 2014-07-11 12:00 A |  | 100% | 2014-07-02 08:00 | 2014-07-07 17:00 | 4d |  | 74h | 74h |
| 189 | 1.3.3.1.1.1 | Create Integration Test Case |  | 1.75d | 2014-07-07 08:00 A | 2014-07-08 15:00 A | 164 | 100% | 2014-07-03 08:00 | 2014-07-04 17:00 | 2d | MinhPT; TuanNN | 28h | 28h |
| 190 | 1.3.3.1.1.2 | Update and review Integration Test Case |  | 0.25d | 2014-07-08 15:00 A | 2014-07-08 17:00 A | 189 | 100% |  |  |  | MinhPT | 2h | 2h |
| 191 | 1.3.3.1.1.3 | Create System Test Case |  | 2.5d | 2014-07-09 08:00 A | 2014-07-11 12:00 A | 189 | 100% | 2014-07-07 08:00 | 2014-07-07 17:00 | 1d | MinhPT; TuanNN | 40h | 40h |
| 192 | 1.3.3.1.1.4 | Update and review System Test Case |  | 0.25d | 2014-07-11 08:00 A | 2014-07-11 10:00 A | 191 | 100% | 2014-07-08 08:00 | 2014-07-08 17:00 | 1d | TuanNN; MinhPT | 4h | 4h |
| 193 | 1.3.3.1.2 | Q & A Management (Update) |  | 0.25d | 2014-07-11 13:00 A | 2014-07-11 15:00 A | 192 | 100% |  |  |  | TuanNN | 2h | 2h |
| 194 | 1.3.3.1.3 | Submit report no.5 First version | milestone | 0d | 2014-07-14 08:00 A | 2014-07-14 08:00 A | 193 | 100% | 2014-07-09 13:00 | 2014-07-09 13:00 |  | MinhPT |  |  |
| 195 | 1.3.3.1.4 | Review report no.5 |  | 0.5d | 2014-07-15 08:00 A | 2014-07-15 12:00 A | 194 | 100% | 2014-07-09 13:00 | 2014-07-09 17:00 | 0.5d | MinhPT; NamLD | 8h | 8h |
| 196 | 1.3.3.1.5 | Progress Report 5 |  | 0.5d | 2014-07-15 08:00 A | 2014-07-15 12:00 A | 194 | 100% | 2014-07-09 13:00 | 2014-07-09 17:00 | 0.5d | TuanNN | 4h | 4h |
| 197 | 1.3.3.1.6 | Submit report no.5 version 1.0 | milestone | 0d | 2014-07-16 08:00 A | 2014-07-16 08:00 A | 195 | 100% | 2014-07-10 08:00 | 2014-07-10 08:00 |  | MinhPT |  |  |
| 198 | 1.3.3.2 | **Execute test** |  | 12d | 2014-07-16 08:00 A | 2014-07-31 17:00 A |  | 100% | 2014-07-15 08:00 | 2014-07-29 17:00 | 11d |  | 164h | 164h |
| 199 | 1.3.3.2.1 | **Execute Test Part 1** |  | 6d | 2014-07-16 08:00 A | 2014-07-23 17:00 A |  | 100% | 2014-07-15 08:00 | 2014-07-17 17:00 | 3d |  | 80h | 80h |
| 200 | 1.3.3.2.1.1 | Execute Component Test |  | 0.5d | 2014-07-16 08:00 A | 2014-07-16 12:00 A | 166 | 100% |  |  |  | MinhPT; TuanNN | 8h | 8h |
| 201 | 1.3.3.2.1.2 | Fix bug Component Test |  | 0.5d | 2014-07-16 13:00 A | 2014-07-16 17:00 A | 200 | 100% |  |  |  | DatPT; NamLD | 8h | 8h |
| 202 | 1.3.3.2.1.3 | Execute Integration Test |  | 1d | 2014-07-17 08:00 A | 2014-07-17 17:00 A | 201 | 100% | 2014-07-15 08:00 | 2014-07-15 17:00 | 1d | MinhPT; TuanNN | 16h | 16h |
| 203 | 1.3.3.2.1.4 | Fix bug Integration Test |  | 1d | 2014-07-18 08:00 A | 2014-07-18 17:00 A | 202 | 100% | 2014-07-16 08:00 | 2014-07-16 17:00 | 1d | NamLD | 8h | 8h |
| 204 | 1.3.3.2.1.5 | Execute System Test |  | 2d | 2014-07-21 08:00 A | 2014-07-22 17:00 A | 203 | 100% | 2014-07-17 08:00 | 2014-07-17 12:00 | 0.5d | MinhPT; TuanNN | 32h | 32h |
| 205 | 1.3.3.2.1.6 | Fix bug System Test |  | 1d | 2014-07-23 08:00 A | 2014-07-23 17:00 A | 204 | 100% | 2014-07-17 13:00 | 2014-07-17 17:00 | 0.5d | NamLD | 8h | 8h |

| ID | WBS | Task | Type | Duration | Start | Finish | Predecessors | Complete | Remaining | Baseline start | Baseline finish | Baseline duration | Total slack | Constraint | Resources | Work | Actual work |
| --- | --- | --- | --- | --- | --- | --- | --- | --- | --- | --- | --- | --- | --- | --- | --- | --- | --- |
| 206 | 1.3.3.2.2 | **Execute Test Part 2** |  | 5d | 2014-07-24 08:00 A | 2014-07-30 17:00 A |  | 100% |  | 2014-07-23 08:00 | 2014-07-29 17:00 | 5d |  |  |  | 72h | 72h |
| 207 | 1.3.3.2.2.1 | Execute Component Test |  | 0.5d | 2014-07-24 08:00 A | 2014-07-24 12:00 A | 185 | 100% |  |  |  |  |  |  | MinhPT; TuanNN | 8h | 8h |
| 208 | 1.3.3.2.2.2 | Fix bug Component Test |  | 0.5d | 2014-07-24 13:00 A | 2014-07-24 17:00 A | 207 | 100% |  |  |  |  |  |  | DatPT; NamLD | 8h | 8h |
| 209 | 1.3.3.2.2.3 | Execute Integration Test |  | 1d | 2014-07-25 08:00 A | 2014-07-28 17:00 A | 208 | 100% |  | 2014-07-22 13:00 | 2014-07-23 12:00 | 1d |  | finish no earlier than 2014-07-28 17:00 | MinhPT; TuanNN | 16h | 16h |
| 210 | 1.3.3.2.2.4 | Fix bug Integration Test |  | 0.5d | 2014-07-28 08:00 A | 2014-07-28 12:00 A | 209 | 100% |  | 2014-07-23 13:00 | 2014-07-24 12:00 | 1d |  |  | DatPT; NamLD | 8h | 8h |
| 211 | 1.3.3.2.2.5 | Execute System Test |  | 2d | 2014-07-28 08:00 A | 2014-07-29 17:00 A | 210 | 100% |  | 2014-07-24 13:00 | 2014-07-25 12:00 | 1d |  | finish no earlier than 2014-07-29 17:00 | MinhPT; TuanNN | 16h | 16h |
| 212 | 1.3.3.2.2.6 | Fix bug System Test |  | 1d | 2014-07-30 08:00 A | 2014-07-30 17:00 A | 211 | 100% |  | 2014-07-25 13:00 | 2014-07-29 12:00 | 2d |  |  | NamLD; DatPT | 16h | 16h |
| 213 | 1.3.3.2.3 | Complete Testing | milestone | 0d | 2014-07-31 08:00 A | 2014-07-31 08:00 A | 212 | 100% |  | 2014-07-29 13:00 | 2014-07-29 13:00 |  |  |  | Project Team |  |  |
| 214 | 1.3.3.2.4 | Create Test Report first verstion |  | 0.5d | 2014-07-31 08:00 A | 2014-07-31 12:00 A | 213 | 100% |  |  |  |  |  |  | MinhPT | 4h | 4h |
| 215 | 1.3.3.2.5 | Report no.5 Final (Update) |  | 0.5d | 2014-07-31 13:00 A | 2014-07-31 17:00 A | 214 | 100% |  |  |  |  |  |  | MinhPT | 4h | 4h |
| 216 | 1.3.3.2.6 | Q & A Management (Update) |  | 0.5d | 2014-07-31 08:00 A | 2014-07-31 12:00 A | 213 | 100% |  |  |  |  |  |  | TuanNN | 4h | 4h |
| 217 | 1.3.4 | Create report no.6 -Software User's Manual |  | 3d | 2014-08-01 08:00 A | 2014-08-05 17:00 A | 211, 213 | 100% |  | 2014-07-29 13:00 | 2014-07-31 12:00 | 2d |  |  | NamLD; DatPT; MinhPT; TuanNN | 96h | 96h |
| 218 | 1.3.5 | Submit report no.6 First version | milestone | 0d | 2014-08-06 08:00 A | 2014-08-06 08:00 A | 217 | 100% |  | 2014-07-31 13:00 | 2014-07-31 13:00 |  |  |  | NamLD |  |  |
| 219 | 1.3.6 | Review & update report no.6 |  | 1d | 2014-08-07 08:00 A | 2014-08-07 17:00 A | 218 | 100% |  | 2014-07-31 13:00 | 2014-08-01 12:00 | 1d |  |  | NamLD; DatPT; MinhPT; TuanNN | 32h | 32h |
| 220 | 1.3.7 | Progress Report 6 |  | 1d | 2014-08-08 08:00 A | 2014-08-08 17:00 A | 219 | 100% |  | 2014-08-01 13:00 | 2014-08-04 12:00 | 1d |  |  | TuanNN; NamLD; DatPT; MinhPT | 32h | 32h |
| 221 | 1.3.8 | Submit report no.6 final version | milestone | 0d | 2014-08-11 08:00 A | 2014-08-11 08:00 A | 219, 220 | 100% |  | 2014-08-04 13:00 | 2014-08-04 13:00 |  |  |  | NamLD |  |  |
| 222 | 1.3.9 | Prepare Final Report and Source Code |  | 7d | 2014-08-12 08:00 A | 2014-08-20 17:00 A | 221 | 100% |  | 2014-08-04 13:00 | 2014-08-11 12:00 | 5d |  |  | DatPT; MinhPT; NamLD; TuanNN | 224h | 224h |
| 223 | 1.3.10 | Submit Final document and CD Source Code |  | 0.5d | 2014-08-21 08:00 A | 2014-08-21 12:00 A | 221, 222 | 100% |  | 2014-08-11 13:00 | 2014-08-11 17:00 | 0.5d |  |  | NamLD; DatPT; MinhPT; TuanNN | 16h | 16h |
| 224 | 1.4 | **Termination** |  | 6d | 2014-08-22 08:00 A | 2014-08-29 17:00 |  | 83% | 1d | 2014-08-12 08:00 | 2014-08-22 17:00 | 9d | 0d |  |  | 192h | 160h |
| 225 | 1.4.1 | **Preclosing** |  | 2d | 2014-08-22 08:00 A | 2014-08-25 17:00 A |  | 100% |  | 2014-08-12 08:00 | 2014-08-18 17:00 | 5d |  |  |  | 64h | 64h |
| 226 | 1.4.1.1 | Conduct project review-lessons learned |  | 2d | 2014-08-22 08:00 A | 2014-08-25 17:00 A | 223 | 100% |  | 2014-08-12 08:00 | 2014-08-13 17:00 | 2d |  |  | DatPT; MinhPT; NamLD; TuanNN | 64h | 64h |
| 227 | 1.4.2 | **Closing** |  | 4d | 2014-08-26 08:00 A | 2014-08-29 17:00 |  | 75% | 1d | 2014-08-18 08:00 | 2014-08-22 17:00 | 5d | 0d |  |  | 128h | 96h |
| 228 | 1.4.2.1 | Prepare for presentation |  | 3d | 2014-08-26 08:00 A | 2014-08-28 17:00 A | 226 | 100% |  | 2014-08-19 08:00 | 2014-08-20 12:00 | 1.5d |  |  | DatPT; MinhPT; NamLD; TuanNN | 96h | 96h |
| 229 | 1.4.2.2 | Represent Capstone Project and Completed |  | 1d | 2014-08-29 08:00 | 2014-08-29 17:00 | 228 |  |  | 2014-08-20 13:00 | 2014-08-22 12:00 | 2d | 0d |  | DatPT; MinhPT; NamLD; TuanNN | 32h |  |
